# USP Projekat 2018

Schedule from MS Project, 2018-07-02 to 2021-07-01, costs in €.
AGEDIS - Advanced Garbage Evidention and DIsposal System
Elektrotehnički fakultet u Beogradu
Projekat koji modernizuje sistem bacanja đubreta i evidencije plaćenih računa

## Calendars

- Standard: Mon-Fri 08:00-12:00, 13:00-17:00; Sat-Sun off. Exceptions (off unless hours are given): 2018-12-30 to 2019-12-30 (Nova Godina, recurring), 2019-01-08 to 2021-01-08 (Božić, recurring).

## Resources

| Resource | Group | Unit | Rate |
| --- | --- | --- | --- |
| BMU - Menadzer1 | BMU |  | 35 |
| BMU - Istraživač1 | BMU |  | 26.75 |
| BMU - Tehničar1 | BMU |  | 20.25 |
| BMU - Administrator1 | BMU |  | 16.38 |
| Vaisala - Menadžer1 | Vaisala |  | 35 |
| Vaisala - Istraživač1 | Vaisala |  | 26.75 |
| Vaisala - Tehničar1 | Vaisala |  | 20.25 |
| Vaisala - Administrator1 | Vaisala |  | 16.38 |
| SR - Menadžer1 | Swedish Recycling |  | 36.75 |
| SR - Istraživač1 | Swedish Recycling |  | 30.13 |
| SR - Tehničar1 | Swedish Recycling |  | 23.75 |
| SR - Administrator1 | Swedish Recycling |  | 19.63 |
| Xebia - Menadžer1 | Xebia |  | 36.75 |
| Xebia - Istraživač1 | Xebia |  | 30.13 |
| Xebia - Tehničar1 | Xebia |  | 23.75 |
| Xebia - Administrator1 | Xebia |  | 19.63 |
| ETF - Menadžer1 | Elektortehnički fakultet |  | 13.5 |
| ETF - Istraživač1 | Elektortehnički fakultet |  | 10 |
| ETF - Tehničar1 | Elektortehnički fakultet |  | 7.13 |
| ETF - Administrator1 | Elektortehnički fakultet |  | 5.63 |
| Licenca za softver za generisanje statistike | Licenca | licenca | 1666.67 |
| Licenca za softver za modelovanje aplikacije | Licenca | licenca | 1666.67 |
| Licenca za softver za testiranje | Licenca | licenca | 833.33 |
| Server sale | Prostor |  | 50000 |
| Modemi za pametne kante | Hardver |  | 75000 |
| Senzori za pametne kante | Hardver |  | 50000 |
| Reklamni materijal | Promo materijal |  | 16666.7 |
| Ulaznice za konferencije | Promo materijal |  | 833.33 |
| Materijali za podršku klijenata | Promo materijal |  | 333.33 |
| Eksterna verifikacija modela sistema | Outsourcing |  | 5333.33 |
| Licenca za Microsoft Project | Licenca | licenca | 1800 |
| Proizvodnja pametnih kanti | Outsourcing |  | 80000 |
| Reklamni video materijali |  |  | 13666.7 |
| BMU - Menadzer3 | BMU |  | 35 |
| BMU - Menadzer2 | BMU |  | 35 |
| BMU - Istraživač3 | BMU |  | 26.75 |
| BMU - Istraživač2 | BMU |  | 26.75 |
| BMU - Tehničar3 | BMU |  | 20.25 |
| BMU - Tehničar2 | BMU |  | 20.25 |
| BMU - Administrator3 | BMU |  | 16.38 |
| BMU - Administrator2 | BMU |  | 16.38 |
| Vaisala - Menadžer3 | Vaisala |  | 35 |
| Vaisala - Menadžer2 | Vaisala |  | 35 |
| Vaisala - Istraživač3 | Vaisala |  | 26.75 |
| Vaisala - Istraživač2 | Vaisala |  | 26.75 |
| Vaisala - Tehničar3 | Vaisala |  | 20.25 |
| Vaisala - Tehničar2 | Vaisala |  | 20.25 |
| Vaisala - Administrator3 | Vaisala |  | 16.38 |
| Vaisala - Administrator2 | Vaisala |  | 16.38 |
| SR - Menadžer3 | Swedish Recycling |  | 36.75 |
| SR - Menadžer2 | Swedish Recycling |  | 36.75 |
| SR - Istraživač3 | Swedish Recycling |  | 30.13 |
| SR - Istraživač2 | Swedish Recycling |  | 30.13 |
| SR - Tehničar3 | Swedish Recycling |  | 23.75 |
| SR - Tehničar2 | Swedish Recycling |  | 23.75 |
| SR - Administrator3 | Swedish Recycling |  | 19.63 |
| SR - Administrator2 | Swedish Recycling |  | 19.63 |
| Xebia - Menadžer3 | Xebia |  | 36.75 |
| Xebia - Menadžer2 | Xebia |  | 36.75 |
| Xebia - Istraživač3 | Xebia |  | 30.13 |
| Xebia - Istraživač2 | Xebia |  | 30.13 |
| Xebia - Tehničar3 | Xebia |  | 23.75 |
| Xebia - Tehničar2 | Xebia |  | 23.75 |
| Xebia - Administrator3 | Xebia |  | 19.63 |
| Xebia - Administrator2 | Xebia |  | 19.63 |
| ETF - Menadžer3 | Elektortehnički fakultet |  | 13.5 |
| ETF - Menadžer2 | Elektortehnički fakultet |  | 13.5 |
| ETF - Istraživač3 | Elektortehnički fakultet |  | 10 |
| ETF - Istraživač2 | Elektortehnički fakultet |  | 10 |
| ETF - Tehničar3 | Elektortehnički fakultet |  | 7.13 |
| ETF - Tehničar2 | Elektortehnički fakultet |  | 7.13 |
| ETF - Administrator3 | Elektortehnički fakultet |  | 5.63 |
| ETF - Administrator2 | Elektortehnički fakultet |  | 5.63 |

## Schedule

| ID | WBS | Task | Duration | Start | Finish | Predecessors | Total slack | Free slack |
| --- | --- | --- | --- | --- | --- | --- | --- | --- |
| 1 | 1 | **WP1 - Analiza tržišta i korisničkih zahteva** | 88d | 2018-07-02 | 2018-10-31 |  |  |  |
| 2 | 1.1 | **Analiza tržišta** | 44d | 2018-07-02 | 2018-08-30 |  | 2d |  |
| 3 | 1.1.1 | **Iniciranje analize tržišta** | 5d | 2018-07-02 | 2018-07-06 |  | 2d | 0d |
| 4 | 1.1.1.1 | Selekcija ljudi | 2d | 2018-07-02 | 2018-07-03 |  | 2d | 0d |
| 5 | 1.1.1.2 | Formiranje timova | 2d | 2018-07-04 | 2018-07-05 | 4 | 2d | 0d |
| 6 | 1.1.1.3 | Dobijanje odobrenja o validnosti timova | 1d | 2018-07-06 | 2018-07-06 | 5 | 2d |  |
| 7 | 1.1.2 | **Planiranje analize tržišta** | 10d | 2018-07-09 | 2018-07-20 | 3 | 2d | 0d |
| 8 | 1.1.2.1 | Definisanje svih potrebnih aktivnosti faze | 5d | 2018-07-09 | 2018-07-13 |  | 2d | 0d |
| 9 | 1.1.2.2 | Dodeljivanje aktivnosti timovima | 2d | 2018-07-16 | 2018-07-17 | 8 | 2d | 0d |
| 10 | 1.1.2.3 | Iniciranje kontakta sa komunalnim službama | 7d | 2018-07-09 | 2018-07-17 |  | 2d | 0d |
| 11 | 1.1.2.4 | Dodeljivanje lokacija timovima | 1d | 2018-07-18 | 2018-07-18 | 10, 9 | 2d | 0d |
| 12 | 1.1.2.5 | Pisanje izveštaja o planu | 1d | 2018-07-19 | 2018-07-19 | 11 | 2d | 0d |
| 13 | 1.1.2.6 | Dobijanje dozvole od višeg menadžmenta | 1d | 2018-07-20 | 2018-07-20 | 12 | 2d |  |
| 14 | 1.1.3 | **Izvršavanje analize tržišta** | 24d | 2018-07-23 | 2018-08-23 | 7 | 2d |  |
| 15 | 1.1.3.1 | Prepoznavanje trenutnog stanja | 2d | 2018-07-23 | 2018-07-24 |  | 49d | 0d |
| 16 | 1.1.3.2 | **Rad na terenu** | 20d | 2018-07-25 | 2018-08-21 | 15 |  |  |
| 17 | 1.1.3.2.1 | **Rad na terenu 1** | 5d | 2018-07-25 | 2018-07-31 |  | 49d | 0d |
| 18 | 1.1.3.2.1.1 | Sastanak sa komunalnom službom | 1d | 2018-07-25 | 2018-07-25 |  | 49d | 0d |
| 19 | 1.1.3.2.1.2 | Analiziranje konkretnog stanja | 3d | 2018-07-26 | 2018-07-30 | 18 | 49d | 0d |
| 20 | 1.1.3.2.1.3 | Pisanje lokalnog izveštaja | 1d | 2018-07-31 | 2018-07-31 | 19 | 49d |  |
| 21 | 1.1.3.2.2 | **Rad na terenu 2** | 5d | 2018-08-01 | 2018-08-07 | 17 | 49d | 0d |
| 22 | 1.1.3.2.2.1 | Sastanak sa komunalnom službom | 1d | 2018-08-01 | 2018-08-01 |  | 49d | 0d |
| 23 | 1.1.3.2.2.2 | Analiziranje konkretnog stanja | 3d | 2018-08-02 | 2018-08-06 | 22 | 49d | 0d |
| 24 | 1.1.3.2.2.3 | Pisanje lokalnog izveštaja | 1d | 2018-08-07 | 2018-08-07 | 23 | 49d |  |

| ID | WBS | Task | Type | Duration | Start | Finish | Predecessors | Total slack | Free slack | Constraint |
| --- | --- | --- | --- | --- | --- | --- | --- | --- | --- | --- |
| 25 | 1.1.3.2.3 | **Rad na terenu 3** |  | 5d | 2018-08-08 | 2018-08-14 | 21 | 49d | 0d |  |
| 26 | 1.1.3.2.3.1 | Sastanak sa komunalnom službom |  | 1d | 2018-08-08 | 2018-08-08 |  | 49d | 0d |  |
| 27 | 1.1.3.2.3.2 | Analiziranje konkretnog stanja |  | 3d | 2018-08-09 | 2018-08-13 | 26 | 49d | 0d |  |
| 28 | 1.1.3.2.3.3 | Pisanje lokalnog izveštaja |  | 1d | 2018-08-14 | 2018-08-14 | 27 | 49d |  |  |
| 29 | 1.1.3.2.4 | **Rad na terenu 4** |  | 5d | 2018-08-15 | 2018-08-21 | 25 | 49d |  |  |
| 30 | 1.1.3.2.4.1 | Sastanak sa komunalnom službom |  | 1d | 2018-08-15 | 2018-08-15 |  | 49d | 0d |  |
| 31 | 1.1.3.2.4.2 | Analiziranje konkretnog stanja |  | 3d | 2018-08-16 | 2018-08-20 | 30 | 49d | 0d |  |
| 32 | 1.1.3.2.4.3 | Pisanje lokalnog izveštaja |  | 1d | 2018-08-21 | 2018-08-21 | 31 | 49d |  |  |
| 33 | 1.1.3.3 | Sumiranje rezultata | manual | 2d | 2018-08-22 | 2018-08-23 | 16 |  |  |  |
| 34 | 1.1.4 | **Monitoring I kontrola analize tržišta** |  | 44d | 2018-07-02 | 2018-08-30 |  | 4d |  |  |
| 35 | 1.1.4.1 | Uspostavljenje sistema za praćenje napretka |  | 5d | 2018-07-02 | 2018-07-06 |  | 44d | 0d |  |
| 36 | 1.1.4.2 | Praćenje napretka |  | 39d | 2018-07-09 | 2018-08-30 | 35 | 44d |  |  |
| 37 | 1.1.4.3 | Otkrivanje I rešavanje problema |  | 44d | 2018-07-02 | 2018-08-30 |  | 44d |  |  |
| 38 | 1.1.4.4 | **Izveštavanje o statusu analize** |  | 30.75d | 2018-07-06 | 2018-08-17 |  | 0d |  |  |
| 39 | 1.1.4.4.1 | Izveštavanje o statusu analize 1 | manual | 1d | 2018-07-06 | 2018-07-06 |  |  |  | start no earlier than 2018-07-06 |
| 40 | 1.1.4.4.2 | Izveštavanje o statusu analize 2 | manual | 1d | 2018-07-13 | 2018-07-13 |  |  |  | start no earlier than 2018-07-13 |
| 41 | 1.1.4.4.3 | Izveštavanje o statusu analize 3 | manual | 1d | 2018-07-20 | 2018-07-20 |  |  |  | start no earlier than 2018-07-20 |
| 42 | 1.1.4.4.4 | Izveštavanje o statusu analize 4 | manual | 1d | 2018-07-27 | 2018-07-27 |  |  |  | start no earlier than 2018-07-27 |
| 43 | 1.1.4.4.5 | Izveštavanje o statusu analize 5 | manual | 1d | 2018-08-03 | 2018-08-03 |  |  |  | start no earlier than 2018-08-03 |
| 44 | 1.1.4.4.6 | Izveštavanje o statusu analize 6 | manual | 1d | 2018-08-10 | 2018-08-10 |  |  |  | start no earlier than 2018-08-10 |
| 45 | 1.1.4.4.7 | Izveštavanje o statusu analize 7 | manual | 1d | 2018-08-17 | 2018-08-17 |  |  |  | start no earlier than 2018-08-17 |
| 46 | 1.1.5 | **Zatvaranje analize tržišta** |  | 5d | 2018-07-02 | 2018-07-06 |  | 83d |  |  |
| 47 | 1.1.5.1 | Pisanje završnog izveštaja |  | 2d | 2018-07-02 | 2018-07-03 |  | 83d | 0d |  |
| 48 | 1.1.5.2 | Izvršavanje revizije kompletne analize |  | 1d | 2018-07-04 | 2018-07-04 | 47 | 83d | 0d |  |
| 49 | 1.1.5.3 | Dobijanje odobrenja od menadžera |  | 2d | 2018-07-05 | 2018-07-06 | 48 | 83d |  |  |

| ID | WBS | Task | Duration | Start | Finish | Predecessors | Total slack | Free slack |
| --- | --- | --- | --- | --- | --- | --- | --- | --- |
| 50 | 1.2 | **Analiza korisničkih zahteva** | 88d | 2018-07-02 | 2018-10-31 |  | 0d |  |
| 51 | 1.2.1 | **Iniciranje analize korisničkih zahteva** | 10d | 2018-07-02 | 2018-07-13 |  | 78d |  |
| 52 | 1.2.1.1 | Napisati one-page opis posla | 1d | 2018-07-02 | 2018-07-02 |  | 78d | 0d |
| 53 | 1.2.1.2 | Selekcija ljudi | 4d | 2018-07-03 | 2018-07-06 | 52 | 78d | 0d |
| 54 | 1.2.1.3 | Formiranje timova | 4d | 2018-07-09 | 2018-07-12 | 53 | 78d | 0d |
| 55 | 1.2.1.4 | Dobijanje odobrenja o validnosti timova | 1d | 2018-07-13 | 2018-07-13 | 54 | 78d |  |
| 56 | 1.2.2 | **Planiranje analize korisničkih zahteva** | 15d | 2018-07-02 | 2018-07-20 |  | 73d |  |
| 57 | 1.2.2.1 | Definisanje svih potrebnih aktivnosti faze | 5d | 2018-07-02 | 2018-07-06 |  | 73d | 0d |
| 58 | 1.2.2.2 | Dodeljivanje aktivnosti timovima | 3d | 2018-07-09 | 2018-07-11 | 57 | 73d | 0d |
| 59 | 1.2.2.3 | Priprema sistema za anketiranje | 5d | 2018-07-12 | 2018-07-18 | 58 | 73d | 0d |
| 60 | 1.2.2.4 | Priprema baza podataka za skladištenje rezultata anketa | 5d | 2018-07-12 | 2018-07-18 | 58 | 73d | 0d |
| 61 | 1.2.2.5 | Pisanje izveštaja o planu | 1d | 2018-07-19 | 2018-07-19 | 59, 60 | 73d | 0d |
| 62 | 1.2.2.6 | Dobijanje dozvole od višeg menadžmenta | 1d | 2018-07-20 | 2018-07-20 | 61 | 73d |  |
| 63 | 1.2.3 | **Izvršavanje analize korisničkih zahteva** | 53d | 2018-07-02 | 2018-09-12 |  | 35d |  |
| 64 | 1.2.3.1 | **Izvršavanje anketa** | 20d | 2018-07-02 | 2018-07-27 |  | 35d | 0d |
| 65 | 1.2.3.1.1 | Pisanje korisničkih anketa | 3d | 2018-07-02 | 2018-07-04 |  | 35d | 0d |
| 66 | 1.2.3.1.2 | Izvršavanje anketa | 12d | 2018-07-05 | 2018-07-20 | 65 | 35d | 0d |
| 67 | 1.2.3.1.3 | Analiziranje rezultata anketa | 4d | 2018-07-23 | 2018-07-26 | 66 | 35d | 0d |
| 68 | 1.2.3.1.4 | Dokumentovanje rezultata anketa | 1d | 2018-07-27 | 2018-07-27 | 67 | 35d |  |
| 69 | 1.2.3.2 | Izvršavanje intervjua | 20d | 2018-07-02 | 2018-07-27 |  | 35d | 0d |
| 70 | 1.2.3.3 | Organizacija tribina | 20d | 2018-07-02 | 2018-07-27 |  | 35d | 0d |
| 71 | 1.2.3.4 | Sumiranje rezultata | 3d | 2018-07-30 | 2018-08-01 | 64, 69, 70 | 35d | 0d |
| 72 | 1.2.3.5 | Pisanje slučajeva korišćenja | 18d | 2018-08-02 | 2018-08-27 | 71 | 35d | 0d |
| 73 | 1.2.3.6 | Kreiranje Requirements Breakdown Structure (RBS) dokumenta | 10d | 2018-08-28 | 2018-09-10 | 72 | 35d | 0d |
| 74 | 1.2.3.7 | Pisanje konačnog izveštaja | 2d | 2018-09-11 | 2018-09-12 | 73 | 35d |  |

| ID | WBS | Task | Type | Duration | Start | Finish | Predecessors | Total slack | Free slack | Constraint |
| --- | --- | --- | --- | --- | --- | --- | --- | --- | --- | --- |
| 75 | 1.2.4 | **Monitoring i kontrola analize korisničkih zahteva** |  | 88d | 2018-07-02 | 2018-10-31 |  | 0d |  |  |
| 76 | 1.2.4.1 | Uspostavljenje sistema za praćenje napretka |  | 8d | 2018-07-02 | 2018-07-11 |  | 0d |  |  |
| 77 | 1.2.4.2 | Praćenje napretka |  | 80d | 2018-07-12 | 2018-10-31 | 76 | 0d |  |  |
| 78 | 1.2.4.3 | Otkrivanje I rešavanje problema |  | 88d | 2018-07-02 | 2018-10-31 |  | 0d |  |  |
| 79 | 1.2.4.4 | **Izveštavanje o statusu analize** |  | 80.75d | 2018-07-06 | 2018-10-26 |  | 0d |  |  |
| 80 | 1.2.4.4.1 | Izveštavanje o statusu analize 1 | manual | 1d | 2018-07-06 | 2018-07-06 |  |  |  | start no earlier than 2018-07-06 |
| 81 | 1.2.4.4.2 | Izveštavanje o statusu analize 2 | manual | 1d | 2018-07-13 | 2018-07-13 |  |  |  | start no earlier than 2018-07-13 |
| 82 | 1.2.4.4.3 | Izveštavanje o statusu analize 3 | manual | 1d | 2018-07-20 | 2018-07-20 |  |  |  | start no earlier than 2018-07-20 |
| 83 | 1.2.4.4.4 | Izveštavanje o statusu analize 4 | manual | 1d | 2018-07-27 | 2018-07-27 |  |  |  | start no earlier than 2018-07-27 |
| 84 | 1.2.4.4.5 | Izveštavanje o statusu analize 5 | manual | 1d | 2018-08-03 | 2018-08-03 |  |  |  | start no earlier than 2018-08-03 |
| 85 | 1.2.4.4.6 | Izveštavanje o statusu analize 6 | manual | 1d | 2018-08-10 | 2018-08-10 |  |  |  | start no earlier than 2018-08-10 |
| 86 | 1.2.4.4.7 | Izveštavanje o statusu analize 7 | manual | 1d | 2018-08-17 | 2018-08-17 |  |  |  | start no earlier than 2018-08-17 |
| 87 | 1.2.4.4.8 | Izveštavanje o statusu analize 8 | manual | 1d | 2018-08-24 | 2018-08-24 |  |  |  | start no earlier than 2018-08-24 |
| 88 | 1.2.4.4.9 | Izveštavanje o statusu analize 9 | manual | 1d | 2018-08-31 | 2018-08-31 |  |  |  | start no earlier than 2018-08-31 |
| 89 | 1.2.4.4.10 | Izveštavanje o statusu analize 10 | manual | 1d | 2018-09-07 | 2018-09-07 |  |  |  | start no earlier than 2018-09-07 |
| 90 | 1.2.4.4.11 | Izveštavanje o statusu analize 11 | manual | 1d | 2018-09-14 | 2018-09-14 |  |  |  | start no earlier than 2018-09-14 |
| 91 | 1.2.4.4.12 | Izveštavanje o statusu analize 12 | manual | 1d | 2018-09-21 | 2018-09-21 |  |  |  | start no earlier than 2018-09-21 |
| 92 | 1.2.4.4.13 | Izveštavanje o statusu analize 13 | manual | 1d | 2018-09-28 | 2018-09-28 |  |  |  | start no earlier than 2018-09-28 |
| 93 | 1.2.4.4.14 | Izveštavanje o statusu analize 14 | manual | 1d | 2018-10-05 | 2018-10-05 |  |  |  | start no earlier than 2018-10-05 |
| 94 | 1.2.4.4.15 | Izveštavanje o statusu analize 15 | manual | 1d | 2018-10-12 | 2018-10-12 |  |  |  | start no earlier than 2018-10-12 |
| 95 | 1.2.4.4.16 | Izveštavanje o statusu analize 16 | manual | 1d | 2018-10-19 | 2018-10-19 |  |  |  | start no earlier than 2018-10-19 |
| 96 | 1.2.4.4.17 | Izveštavanje o statusu analize 17 | manual | 1d | 2018-10-26 | 2018-10-26 |  |  |  | start no earlier than 2018-10-26 |
| 97 | 1.2.5 | **Zatvaranje analize korisničkih zahteva** |  | 10d | 2018-07-02 | 2018-07-13 |  | 78d |  |  |
| 98 | 1.2.5.1 | Pisanje završnog izveštaja |  | 4d | 2018-07-02 | 2018-07-05 |  | 78d | 0d |  |
| 99 | 1.2.5.2 | Izvršavanje revizije kompletne analize |  | 4d | 2018-07-06 | 2018-07-11 | 98 | 78d | 0d |  |
| 100 | 1.2.5.3 | Dobijanje odobrenja od menadžera |  | 2d | 2018-07-12 | 2018-07-13 | 99 | 78d |  |  |
| 101 | 2 | Prekretnica - Završena analiza zahteva i tržišta | milestone, manual | 0d | 2018-11-01 | 2018-11-01 | 1 |  |  |  |

| ID | WBS | Task | Type | Duration | Start | Finish | Predecessors | Total slack |
| --- | --- | --- | --- | --- | --- | --- | --- | --- |
| 102 | 3 | **WP2 - Planiranje projekta** |  | 65d | 2018-11-01 | 2019-01-31 | 1 |  |
| 104 | 3.1 | Planiranje resursa |  | 40d | 2018-11-01 | 2018-12-26 |  | 0d |
| 105 | 3.2 | Planiranje rizika |  | 40d | 2018-11-01 | 2018-12-26 |  | 0d |
| 106 | 3.3 | Raspodela posla po participantima |  | 35d | 2018-11-01 | 2018-12-19 |  | 0d |
| 107 | 3.4 | Određivanje aktivnosti unutar svih faza projekta |  | 30d | 2018-12-20 | 2019-01-31 | 106 | 0d |
| 108 | 3.5 | Određivanje mere kvaliteta i postupaka | manual | 25d | 2018-12-27 | 2019-01-31 | 104, 105 |  |
| 109 | 3.6 | Određivanje načina komunikacije | manual | 25d | 2018-12-27 | 2019-01-31 | 104, 105 |  |
| 110 | 4 | Prekretnica - Završen plan projekta | milestone, manual | 0d | 2019-02-01 | 2019-02-01 | 102 |  |
| 111 | 5 | **WP3 - Modelovanje i dizajn** |  | 106d | 2019-02-01 | 2019-06-28 | 102 |  |
| 112 | 5.1 | **Modelovanje i dizajn veb-portala** |  | 106d | 2019-02-01 | 2019-06-28 |  | 0d |
| 113 | 5.1.1 | Izrada dijagrama slučajeva korišćenja |  | 30d | 2019-02-01 | 2019-03-14 |  | 0d |
| 114 | 5.1.2 | Izrada dijagrama klasa |  | 76d | 2019-03-15 | 2019-06-28 | 113 | 0d |
| 115 | 5.1.3 | Izrada dijagrama sekvenci |  | 76d | 2019-03-15 | 2019-06-28 | 113 | 0d |
| 116 | 5.2 | **Modelovanje i dizajn pametne kante** |  | 106d | 2019-02-01 | 2019-06-28 |  | 0d |
| 117 | 5.2.1 | Dizajn spoljašnjosti kante |  | 106d | 2019-02-01 | 2019-06-28 |  | 0d |
| 118 | 5.2.2 | Modelovanje arhitekture računara |  | 46d | 2019-02-01 | 2019-04-05 |  | 0d |
| 119 | 5.2.3 | Dizajn unutrašnjosti kante |  | 60d | 2019-04-08 | 2019-06-28 | 118 | 0d |
| 120 | 6 | Prekretnica - Završeno modelovanje sistema | milestone, manual | 0d | 2019-07-01 | 2019-07-01 | 111 |  |
| 121 | 7 | **WP4 - Izrada prototipa pametne kante** |  | 66d | 2019-07-01 | 2019-09-30 | 111 |  |
| 122 | 7.1 | Izrada prototipa pametne kante |  | 40d | 2019-07-01 | 2019-08-23 |  | 0d |
| 123 | 7.2 | Izrada interfejsa prema softverskoj komponenti |  | 40d | 2019-07-01 | 2019-08-23 |  | 0d |
| 124 | 7.3 | Izrada grafičkog korisničkog interfejsa |  | 40d | 2019-07-01 | 2019-08-23 |  | 0d |
| 125 | 7.4 | Integracija i validacija prototipa | manual | 26d | 2019-08-26 | 2019-09-30 | 122, 123, 124 |  |
| 126 | 8 | **WP5 - Izrada prototipa veb-portala** |  | 45d | 2019-07-01 | 2019-08-30 | 111 |  |
| 127 | 8.1 | Izrada glavnih stranica |  | 35d | 2019-07-01 | 2019-08-16 |  | 0d |
| 128 | 8.2 | Izrada stranica za korisnike |  | 35d | 2019-07-01 | 2019-08-16 |  | 0d |
| 129 | 8.3 | Izrada stranica za administratore |  | 35d | 2019-07-01 | 2019-08-16 |  | 0d |
| 130 | 8.4 | Validacija i integracija prototipa | manual | 10d | 2019-08-19 | 2019-08-30 | 127, 128, 129 |  |
| 131 | 9 | Prekretnica - Izrađeni prototipi | milestone, manual | 0d | 2019-10-01 | 2019-10-01 | 121, 126 |  |

| ID | WBS | Task | Type | Duration | Start | Finish | Predecessors | Total slack |
| --- | --- | --- | --- | --- | --- | --- | --- | --- |
| 132 | 10 | **WP6 - Implementacija pametne kante** |  | 172d | 2019-10-01 | 2020-05-29 | 121 |  |
| 133 | 10.1 | Kreiranje hardverske komponente |  | 90d | 2019-10-01 | 2020-02-05 |  | 0d |
| 134 | 10.2 | Izrada grafičkog korisničkog interfejsa |  | 60d | 2019-10-01 | 2019-12-23 |  | 112d |
| 135 | 10.3 | **Konfiguracija hardverske komponente** |  | 82d | 2020-02-06 | 2020-05-29 | 133 | 0d |
| 136 | 10.3.1 | Dodavanje matične ploče |  | 30d | 2020-02-06 | 2020-03-18 |  | 0d |
| 137 | 10.3.2 | Dodavanje čipova |  | 15d | 2020-03-19 | 2020-04-08 | 136 | 0d |
| 138 | 10.3.3 | Dodavanje LCD displeja |  | 15d | 2020-04-09 | 2020-04-29 | 137 | 0d |
| 139 | 10.3.4 | Dodavanje senzora |  | 15d | 2020-04-30 | 2020-05-20 | 138 | 0d |
| 140 | 10.3.5 | Dodavanje mini modema |  | 7d | 2020-05-21 | 2020-05-29 | 139 | 0d |
| 141 | 11 | **WP7 - Implementacija veb-portala** |  | 193d | 2019-09-02 | 2020-05-29 | 126 |  |
| 142 | 11.1 | **Frontend implementacija** |  | 150d | 2019-09-02 | 2020-03-31 |  | 0d |
| 143 | 11.1.1 | Izrada glavnih stranica |  | 50d | 2019-09-02 | 2019-11-08 |  | 0d |
| 144 | 11.1.2 | Izrada stranica za korisnike |  | 50d | 2019-11-11 | 2020-01-21 | 143 | 0d |
| 145 | 11.1.3 | Izrada stranica za administratore |  | 50d | 2020-01-22 | 2020-03-31 | 144 | 0d |
| 146 | 11.2 | **Backend implementacija** |  | 150d | 2019-09-02 | 2020-03-31 |  | 0d |
| 147 | 11.2.1 | Izrada kontrolera |  | 120d | 2019-09-02 | 2020-02-18 |  | 0d |
| 148 | 11.2.2 | Omogućavanje komunikacije sa bazom |  | 20d | 2019-09-02 | 2019-09-27 |  | 0d |
| 149 | 11.2.3 | Implementacija biznis logike |  | 60d | 2019-09-30 | 2019-12-20 | 148 | 0d |
| 150 | 11.2.4 | Izrada modela |  | 40d | 2019-12-23 | 2020-02-18 | 149 | 0d |
| 151 | 11.2.5 | Povezivanje sa sistemom za naplatu |  | 30d | 2020-02-19 | 2020-03-31 | 147, 150 | 0d |
| 152 | 11.3 | Integracija frontend i backend dela |  | 43d | 2020-04-01 | 2020-05-29 | 142, 146 | 0d |
| 153 | 12 | Prekretnica - Završena implementacija | milestone, manual | 0d | 2020-06-01 | 2020-06-01 | 132, 141 |  |
| 154 | 13 | **WP8 - Testiranje pametne kante** |  | 88d | 2020-06-01 | 2020-09-30 | 132 |  |
| 155 | 13.1 | Izrada testova |  | 30d | 2020-06-01 | 2020-07-10 |  | 0d |
| 156 | 13.2 | Pokretanje testova |  | 58d | 2020-07-13 | 2020-09-30 | 155 | 0d |

| ID | WBS | Task | Type | Duration | Start | Finish | Predecessors | Total slack | Resources | Work | Cost |
| --- | --- | --- | --- | --- | --- | --- | --- | --- | --- | --- | --- |
| 157 | 14 | **WP9 - Testiranje veb-portala** |  | 88d | 2020-06-01 | 2020-09-30 | 141 |  |  |  |  |
| 158 | 14.1 | Izrada testova |  | 50d | 2020-06-01 | 2020-08-07 |  | 0d |  |  |  |
| 159 | 14.2 | Pokretanje testova |  | 38d | 2020-08-10 | 2020-09-30 | 158 | 0d |  |  |  |
| 160 | 15 | Prekretnica - Završeno testiranje | milestone, manual | 0d | 2020-10-01 | 2020-10-01 | 154, 157 |  |  |  |  |
| 161 | 16 | **WP10 - Integracija hardvera i softvera** |  | 43d | 2020-10-01 | 2020-11-30 | 154, 157 |  |  |  |  |
| 162 | 16.1 | Koordinisanje postupka integracije |  | 43d | 2020-10-01 | 2020-11-30 |  | 0d |  |  |  |
| 163 | 16.2 | Omogućavanje integracije hardvera |  | 10d | 2020-10-01 | 2020-10-14 |  | 0d |  |  |  |
| 164 | 16.3 | Omogućavanje integracije softvera |  | 5d | 2020-10-01 | 2020-10-07 |  | 5d |  |  |  |
| 165 | 16.4 | Integracija |  | 33d | 2020-10-15 | 2020-11-30 | 163, 164 | 0d |  |  |  |
| 166 | 17 | **WP11 - Integraciono testiranje** |  | 108d | 2020-12-01 | 2021-04-30 | 161 |  |  |  |  |
| 167 | 17.1 | Izrada testova |  | 40d | 2020-12-01 | 2021-01-26 |  | 0d |  |  |  |
| 168 | 17.2 | Pokretanje testova |  | 58d | 2021-01-27 | 2021-04-16 | 167 | 0d |  |  |  |
| 169 | 17.3 | Popravljanje problema |  | 10d | 2021-04-19 | 2021-04-30 | 168 | 0d |  |  |  |
| 170 | 18 | Prekretnica - Integrisana hardverska i softverska komponenta | milestone, manual | 0d | 2021-05-03 | 2021-05-03 | 161, 166 |  |  |  |  |
| 171 | 19 | **WP12 - Puštanje sistema u rad** |  | 43d | 2021-05-03 | 2021-06-30 | 166 |  |  |  |  |
| 172 | 19.1 | Postavljanje kanti |  | 43d | 2021-05-03 | 2021-06-30 |  | 0d |  |  |  |
| 173 | 19.2 | Instalacija softvera |  | 43d | 2021-05-03 | 2021-06-30 |  | 0d |  |  |  |
| 174 | 19.3 | Postavljanje veb-portala na Internet |  | 43d | 2021-05-03 | 2021-06-30 |  | 0d |  |  |  |
| 175 | 19.4 | Administracija postupka puštanja sistema u rad |  | 43d | 2021-05-03 | 2021-06-30 |  | 0d |  |  |  |
| 176 | 19.5 | Obuka osoblja i korisnika |  | 43d | 2021-05-03 | 2021-06-30 |  | 0d |  |  |  |
| 177 | 19.6 | Obezbeđivanje mehanizma za podršku |  | 10d | 2021-05-03 | 2021-05-14 |  | 33d |  |  |  |
| 178 | 20 | Prekretnica - Pušten sistem u rad | milestone, manual | 0d | 2021-07-01 | 2021-07-01 | 171 |  |  |  |  |
| 179 | 21 | **WP13 - Evaluacija i disiminacija** |  | 194d | 2020-10-01 | 2021-06-30 | 154, 157 |  |  | 3296h | 82,940.01 |
| 180 | 21.1 | Prikupljanje utisaka |  | 97d | 2020-10-01 | 2021-02-15 |  | 0d | SR - Tehničar1 [50%]; SR - Tehničar2 [50%] | 776h | 18,430 |
| 181 | 21.2 | Promovisanje proizvoda |  | 97d | 2021-02-16 | 2021-06-30 | 180 | 0d | SR - Tehničar3 [4%]; BMU - Administrator1 [15%]; SR - Administrator1 [15%]; BMU - Tehničar2 [66%] | 776h | 15,300 |
| 182 | 21.3 | Organizovanje marketinških kampanja |  | 100d | 2020-10-01 | 2021-02-18 |  | 0d | BMU - Menadzer1 [9%]; BMU - Menadzer2 [9%]; SR - Menadžer1 [36%]; BMU - Istraživač1 [46%] | 800h | 25,468 |
| 183 | 21.4 | Obezbeđivanje reklamnog materijala |  | 24d | 2020-10-01 | 2020-11-03 |  | 170d | BMU - Tehničar1 | 192h | 3,888 |
| 184 | 21.5 | Učestvovanje na sajmovima i konferencijama |  | 94d | 2021-02-19 | 2021-06-30 | 182 | 0d | BMU - Istraživač1 [8%]; SR - Istraživač1 [27%]; SR - Istraživač2 [30%]; BMU - Tehničar1 [35%] | 752h | 19,854 |
| 185 | 22 | Prekretnica - Završena evaluacija i disiminacija | milestone, manual | 0d | 2021-07-01 | 2021-07-01 | 179 |  |  |  |  |

| ID | WBS | Task | Type | Duration | Start | Finish | Total slack | Free slack | Constraint | Resources | Work | Cost |
| --- | --- | --- | --- | --- | --- | --- | --- | --- | --- | --- | --- | --- |
| 186 | 23 | **WP14 - Upravljanje projektom** |  | 779d | 2018-07-02 | 2021-06-30 |  |  |  |  | 1648h | 51,056 |
| 187 | 23.1 | **Rukovođenje projektom** |  | 757.75d | 2018-07-03 | 2021-06-02 | 0d |  |  |  | 536h | 18,760 |
| 188 | 23.1.1 | Rukovođenje projektom 1 | manual | 1d | 2018-07-03 | 2018-07-03 |  |  | start no earlier than 2018-07-03 | BMU - Menadzer1; BMU - Menadzer2 | 16h | 560 |
| 189 | 23.1.2 | Rukovođenje projektom 2 | manual | 1d | 2018-08-02 | 2018-08-02 |  |  | start no earlier than 2018-08-02 | BMU - Menadzer1; BMU - Menadzer2 | 16h | 560 |
| 190 | 23.1.3 | Rukovođenje projektom 3 | manual | 1d | 2018-09-04 | 2018-09-04 |  |  | start no earlier than 2018-09-04 | BMU - Menadzer1; BMU - Menadzer2 | 16h | 560 |
| 191 | 23.1.4 | Rukovođenje projektom 4 | manual | 1d | 2018-10-02 | 2018-10-02 |  |  | start no earlier than 2018-10-02 | BMU - Menadzer1; BMU - Menadzer2 | 16h | 560 |
| 192 | 23.1.5 | Rukovođenje projektom 5 | manual | 1d | 2018-11-02 | 2018-11-02 |  |  | start no earlier than 2018-11-02 | BMU - Menadzer1; BMU - Menadzer2 | 16h | 560 |
| 193 | 23.1.6 | Rukovođenje projektom 6 | manual | 1d | 2018-12-04 | 2018-12-04 |  |  | start no earlier than 2018-12-04 | BMU - Menadzer1; BMU - Menadzer2 | 16h | 560 |
| 194 | 23.1.7 | Rukovođenje projektom 7 | manual | 1d | 2019-01-02 | 2019-01-02 |  |  | start no earlier than 2019-01-02 | BMU - Menadzer1; BMU - Menadzer2 | 16h | 560 |
| 195 | 23.1.8 | Rukovođenje projektom 8 | manual | 1d | 2019-02-05 | 2019-02-05 |  |  | start no earlier than 2019-02-05 | BMU - Menadzer1; BMU - Menadzer2 | 16h | 560 |
| 196 | 23.1.9 | Rukovođenje projektom 9 | manual | 1d | 2019-03-05 | 2019-03-05 |  |  | start no earlier than 2019-03-05 | BMU - Menadzer1; BMU - Menadzer2 | 16h | 560 |
| 197 | 23.1.10 | Rukovođenje projektom 10 | manual | 1d | 2019-04-02 | 2019-04-02 |  |  | start no earlier than 2019-04-02 | BMU - Menadzer1; BMU - Menadzer2 | 16h | 560 |
| 198 | 23.1.11 | Rukovođenje projektom 11 | manual | 1d | 2019-05-02 | 2019-05-02 |  |  | start no earlier than 2019-05-02 | BMU - Menadzer1; BMU - Menadzer2 | 16h | 560 |
| 199 | 23.1.12 | Rukovođenje projektom 12 | manual | 1d | 2019-06-04 | 2019-06-04 |  |  | start no earlier than 2019-06-04 | BMU - Menadzer1; BMU - Menadzer2 | 16h | 560 |
| 200 | 23.1.13 | Rukovođenje projektom 13 | manual | 1d | 2019-07-02 | 2019-07-02 |  |  | start no earlier than 2019-07-02 | BMU - Menadzer1; BMU - Menadzer2 | 16h | 560 |
| 201 | 23.1.14 | Rukovođenje projektom 14 | manual | 1d | 2019-08-02 | 2019-08-02 |  |  | start no earlier than 2019-08-02 | BMU - Menadzer1; BMU - Menadzer2 | 16h | 560 |
| 202 | 23.1.15 | Rukovođenje projektom 15 | manual | 1d | 2019-09-03 | 2019-09-03 |  |  | start no earlier than 2019-09-03 | BMU - Menadzer1; BMU - Menadzer2 | 16h | 560 |
| 203 | 23.1.16 | Rukovođenje projektom 16 | manual | 1d | 2019-10-02 | 2019-10-02 |  |  | start no earlier than 2019-10-02 | BMU - Menadzer1; BMU - Menadzer2 | 16h | 560 |
| 204 | 23.1.17 | Rukovođenje projektom 17 | manual | 1d | 2019-11-05 | 2019-11-05 |  |  | start no earlier than 2019-11-05 | BMU - Menadzer1; BMU - Menadzer2 | 16h | 560 |
| 205 | 23.1.18 | Rukovođenje projektom 18 | manual | 1d | 2019-12-03 | 2019-12-03 |  |  | start no earlier than 2019-12-03 | BMU - Menadzer1; BMU - Menadzer2 | 16h | 560 |
| 206 | 23.1.19 | Rukovođenje projektom 19 | manual | 1d | 2020-01-02 | 2020-01-02 |  |  | start no earlier than 2020-01-02 | BMU - Menadzer1; BMU - Menadzer2 | 16h | 560 |
| 207 | 23.1.20 | Rukovođenje projektom 20 | manual | 1d | 2020-02-04 | 2020-02-04 |  |  | start no earlier than 2020-02-04 | BMU - Menadzer1; BMU - Menadzer2 | 16h | 560 |
| 208 | 23.1.21 | Rukovođenje projektom 21 | manual | 1d | 2020-03-03 | 2020-03-03 |  |  | start no earlier than 2020-03-03 | BMU - Menadzer1; BMU - Menadzer2 | 16h | 560 |
| 209 | 23.1.22 | Rukovođenje projektom 22 | manual | 1d | 2020-04-02 | 2020-04-02 |  |  | start no earlier than 2020-04-02 | BMU - Menadzer1; BMU - Menadzer2 | 16h | 560 |
| 210 | 23.1.23 | Rukovođenje projektom 23 | manual | 1d | 2020-05-05 | 2020-05-05 |  |  | start no earlier than 2020-05-05 | BMU - Menadzer1; BMU - Menadzer2 | 16h | 560 |
| 211 | 23.1.24 | Rukovođenje projektom 24 | manual | 1d | 2020-06-02 | 2020-06-02 |  |  | start no earlier than 2020-06-02 | BMU - Menadzer1; BMU - Menadzer2 | 16h | 560 |
| 212 | 23.1.25 | Rukovođenje projektom 25 | manual | 1d | 2020-07-02 | 2020-07-02 |  |  | start no earlier than 2020-07-02 | BMU - Menadzer1; BMU - Menadzer2 | 16h | 560 |
| 213 | 23.1.26 | Rukovođenje projektom 26 | manual | 1d | 2020-08-04 | 2020-08-04 |  |  | start no earlier than 2020-08-04 | BMU - Menadzer1; BMU - Menadzer2 | 16h | 560 |
| 214 | 23.1.27 | Rukovođenje projektom 27 | manual | 1d | 2020-09-02 | 2020-09-02 |  |  | start no earlier than 2020-09-02 | BMU - Menadzer1; BMU - Menadzer2 | 16h | 560 |
| 215 | 23.1.28 | Rukovođenje projektom 28 | manual | 1d | 2020-10-02 | 2020-10-02 |  |  | start no earlier than 2020-10-02 | BMU - Menadzer3 | 8h | 280 |
| 216 | 23.1.29 | Rukovođenje projektom 29 | manual | 1d | 2020-11-03 | 2020-11-03 |  |  | start no earlier than 2020-11-03 | BMU - Menadzer3 | 8h | 280 |
| 217 | 23.1.30 | Rukovođenje projektom 30 | manual | 1d | 2020-12-02 | 2020-12-02 |  |  | start no earlier than 2020-12-02 | BMU - Menadzer3 | 8h | 280 |
| 218 | 23.1.31 | Rukovođenje projektom 31 | manual | 1d | 2021-01-05 | 2021-01-05 |  |  | start no earlier than 2021-01-05 | BMU - Menadzer3 | 8h | 280 |
| 219 | 23.1.32 | Rukovođenje projektom 32 | manual | 1d | 2021-02-02 | 2021-02-02 |  |  | start no earlier than 2021-02-02 | BMU - Menadzer3 | 8h | 280 |
| 220 | 23.1.33 | Rukovođenje projektom 33 | manual | 1d | 2021-03-02 | 2021-03-02 |  |  | start no earlier than 2021-03-02 | BMU - Menadzer1; BMU - Menadzer2 | 16h | 560 |
| 221 | 23.1.34 | Rukovođenje projektom 34 | manual | 1d | 2021-04-02 | 2021-04-02 |  |  | start no earlier than 2021-04-02 | BMU - Menadzer1; BMU - Menadzer2 | 16h | 560 |
| 222 | 23.1.35 | Rukovođenje projektom 35 | manual | 1d | 2021-05-04 | 2021-05-04 |  |  | start no earlier than 2021-05-04 | BMU - Menadzer1; BMU - Menadzer2 | 16h | 560 |
| 223 | 23.1.36 | Rukovođenje projektom 36 | manual | 1d | 2021-06-02 | 2021-06-02 |  |  | start no earlier than 2021-06-02 | BMU - Menadzer1; BMU - Menadzer2 | 16h | 560 |
| 224 | 23.2 | Minimalizacija budžeta |  | 34d | 2018-07-02 | 2018-08-16 | 661d | 0d |  |  |  |  |

| ID | WBS | Task | Type | Duration | Start | Finish | Predecessors | Total slack | Free slack | Constraint | Resources | Work | Cost |
| --- | --- | --- | --- | --- | --- | --- | --- | --- | --- | --- | --- | --- | --- |
| 225 | 23.3 | **Minimalizacija rizika** |  | 759d | 2018-07-03 | 2021-06-03 |  | 0d |  |  |  | 288h | 5,832 |
| 226 | 23.3.1 | Minimalizacija rizika 1 | manual | 1d | 2018-07-03 | 2018-07-03 |  |  |  | start no earlier than 2018-07-03 | BMU - Tehničar2 [50%]; BMU - Tehničar3 [50%] | 8h | 162 |
| 227 | 23.3.2 | Minimalizacija rizika 2 | manual | 1d | 2018-08-03 | 2018-08-03 |  |  |  | start no earlier than 2018-08-03 | BMU - Tehničar2 [50%]; BMU - Tehničar3 [50%] | 8h | 162 |
| 228 | 23.3.3 | Minimalizacija rizika 3 | manual | 1d | 2018-09-03 | 2018-09-03 |  |  |  | start no earlier than 2018-09-03 | BMU - Tehničar2 [50%]; BMU - Tehničar3 [50%] | 8h | 162 |
| 229 | 23.3.4 | Minimalizacija rizika 4 | manual | 1d | 2018-10-03 | 2018-10-03 |  |  |  | start no earlier than 2018-10-03 | BMU - Tehničar2 [50%]; BMU - Tehničar3 [50%] | 8h | 162 |
| 230 | 23.3.5 | Minimalizacija rizika 5 | manual | 1d | 2018-11-05 | 2018-11-05 |  |  |  | start no earlier than 2018-11-05 | BMU - Tehničar2 [50%]; BMU - Tehničar3 [50%] | 8h | 162 |
| 231 | 23.3.6 | Minimalizacija rizika 6 | manual | 1d | 2018-12-03 | 2018-12-03 |  |  |  | start no earlier than 2018-12-03 | BMU - Tehničar2 [50%]; BMU - Tehničar3 [50%] | 8h | 162 |
| 232 | 23.3.7 | Minimalizacija rizika 7 | manual | 1d | 2019-01-03 | 2019-01-03 |  |  |  | start no earlier than 2019-01-03 | BMU - Tehničar2 [50%]; BMU - Tehničar3 [50%] | 8h | 162 |
| 233 | 23.3.8 | Minimalizacija rizika 8 | manual | 1d | 2019-02-04 | 2019-02-04 |  |  |  | start no earlier than 2019-02-04 | BMU - Tehničar2 [50%]; BMU - Tehničar3 [50%] | 8h | 162 |
| 234 | 23.3.9 | Minimalizacija rizika 9 | manual | 1d | 2019-03-04 | 2019-03-04 |  |  |  | start no earlier than 2019-03-04 | BMU - Tehničar2 [50%]; BMU - Tehničar3 [50%] | 8h | 162 |
| 235 | 23.3.10 | Minimalizacija rizika 10 | manual | 1d | 2019-04-03 | 2019-04-03 |  |  |  | start no earlier than 2019-04-03 | BMU - Tehničar2 [50%]; BMU - Tehničar3 [50%] | 8h | 162 |
| 236 | 23.3.11 | Minimalizacija rizika 11 | manual | 1d | 2019-05-03 | 2019-05-03 |  |  |  | start no earlier than 2019-05-03 | BMU - Tehničar2 [50%]; BMU - Tehničar3 [50%] | 8h | 162 |
| 237 | 23.3.12 | Minimalizacija rizika 12 | manual | 1d | 2019-06-03 | 2019-06-03 |  |  |  | start no earlier than 2019-06-03 | BMU - Tehničar2 [50%]; BMU - Tehničar3 [50%] | 8h | 162 |
| 238 | 23.3.13 | Minimalizacija rizika 13 | manual | 1d | 2019-07-03 | 2019-07-03 |  |  |  | start no earlier than 2019-07-03 | BMU - Tehničar2 [50%]; BMU - Tehničar3 [50%] | 8h | 162 |
| 239 | 23.3.14 | Minimalizacija rizika 14 | manual | 1d | 2019-08-05 | 2019-08-05 |  |  |  | start no earlier than 2019-08-05 | BMU - Tehničar2 [50%]; BMU - Tehničar3 [50%] | 8h | 162 |
| 240 | 23.3.15 | Minimalizacija rizika 15 | manual | 1d | 2019-09-03 | 2019-09-03 |  |  |  | start no earlier than 2019-09-03 | BMU - Tehničar2 [50%]; BMU - Tehničar3 [50%] | 8h | 162 |
| 241 | 23.3.16 | Minimalizacija rizika 16 | manual | 1d | 2019-10-03 | 2019-10-03 |  |  |  | start no earlier than 2019-10-03 | BMU - Tehničar2 [50%]; BMU - Tehničar3 [50%] | 8h | 162 |
| 242 | 23.3.17 | Minimalizacija rizika 17 | manual | 1d | 2019-11-04 | 2019-11-04 |  |  |  | start no earlier than 2019-11-04 | BMU - Tehničar2 [50%]; BMU - Tehničar3 [50%] | 8h | 162 |
| 243 | 23.3.18 | Minimalizacija rizika 18 | manual | 1d | 2019-12-03 | 2019-12-03 |  |  |  | start no earlier than 2019-12-03 | BMU - Tehničar2 [50%]; BMU - Tehničar3 [50%] | 8h | 162 |
| 244 | 23.3.19 | Minimalizacija rizika 19 | manual | 1d | 2020-01-03 | 2020-01-03 |  |  |  | start no earlier than 2020-01-03 | BMU - Tehničar2 [50%]; BMU - Tehničar3 [50%] | 8h | 162 |
| 245 | 23.3.20 | Minimalizacija rizika 20 | manual | 1d | 2020-02-03 | 2020-02-03 |  |  |  | start no earlier than 2020-02-03 | BMU - Tehničar2 [50%]; BMU - Tehničar3 [50%] | 8h | 162 |
| 246 | 23.3.21 | Minimalizacija rizika 21 | manual | 1d | 2020-03-03 | 2020-03-03 |  |  |  | start no earlier than 2020-03-03 | BMU - Tehničar2 [50%]; BMU - Tehničar3 [50%] | 8h | 162 |
| 247 | 23.3.22 | Minimalizacija rizika 22 | manual | 1d | 2020-04-03 | 2020-04-03 |  |  |  | start no earlier than 2020-04-03 | BMU - Tehničar2 [50%]; BMU - Tehničar3 [50%] | 8h | 162 |
| 248 | 23.3.23 | Minimalizacija rizika 23 | manual | 1d | 2020-05-04 | 2020-05-04 |  |  |  | start no earlier than 2020-05-04 | BMU - Tehničar2 [50%]; BMU - Tehničar3 [50%] | 8h | 162 |
| 249 | 23.3.24 | Minimalizacija rizika 24 | manual | 1d | 2020-06-03 | 2020-06-03 |  |  |  | start no earlier than 2020-06-03 | BMU - Tehničar2 [50%]; BMU - Tehničar3 [50%] | 8h | 162 |
| 250 | 23.3.25 | Minimalizacija rizika 25 | manual | 1d | 2020-07-03 | 2020-07-03 |  |  |  | start no earlier than 2020-07-03 | BMU - Tehničar2 [50%]; BMU - Tehničar3 [50%] | 8h | 162 |
| 251 | 23.3.26 | Minimalizacija rizika 26 | manual | 1d | 2020-08-03 | 2020-08-03 |  |  |  | start no earlier than 2020-08-03 | BMU - Tehničar2 [50%]; BMU - Tehničar3 [50%] | 8h | 162 |
| 252 | 23.3.27 | Minimalizacija rizika 27 | manual | 1d | 2020-09-03 | 2020-09-03 |  |  |  | start no earlier than 2020-09-03 | BMU - Tehničar2 [50%]; BMU - Tehničar3 [50%] | 8h | 162 |
| 253 | 23.3.28 | Minimalizacija rizika 28 | manual | 1d | 2020-10-05 | 2020-10-05 |  |  |  | start no earlier than 2020-10-05 | BMU - Tehničar2 [50%]; BMU - Tehničar3 [50%] | 8h | 162 |
| 254 | 23.3.29 | Minimalizacija rizika 29 | manual | 1d | 2020-11-03 | 2020-11-03 |  |  |  | start no earlier than 2020-11-03 | BMU - Tehničar2 [50%]; BMU - Tehničar3 [50%] | 8h | 162 |
| 255 | 23.3.30 | Minimalizacija rizika 30 | manual | 1d | 2020-12-03 | 2020-12-03 |  |  |  | start no earlier than 2020-12-03 | BMU - Tehničar2 [50%]; BMU - Tehničar3 [50%] | 8h | 162 |
| 256 | 23.3.31 | Minimalizacija rizika 31 | manual | 1d | 2021-01-04 | 2021-01-04 |  |  |  | start no earlier than 2021-01-04 | BMU - Tehničar2 [50%]; BMU - Tehničar3 [50%] | 8h | 162 |
| 257 | 23.3.32 | Minimalizacija rizika 32 | manual | 1d | 2021-02-03 | 2021-02-03 |  |  |  | start no earlier than 2021-02-03 | BMU - Tehničar2 [50%]; BMU - Tehničar3 [50%] | 8h | 162 |
| 258 | 23.3.33 | Minimalizacija rizika 33 | manual | 1d | 2021-03-04 | 2021-03-04 |  |  |  | start no earlier than 2021-03-04 | BMU - Tehničar3 [50%]; BMU - Tehničar1 [50%] | 8h | 162 |
| 259 | 23.3.34 | Minimalizacija rizika 34 | manual | 1d | 2021-04-05 | 2021-04-05 |  |  |  | start no earlier than 2021-04-05 | BMU - Tehničar3 [50%]; BMU - Tehničar1 [50%] | 8h | 162 |
| 260 | 23.3.35 | Minimalizacija rizika 35 | manual | 1d | 2021-05-03 | 2021-05-03 |  |  |  | start no earlier than 2021-05-03 | BMU - Tehničar3 [50%]; BMU - Tehničar1 [50%] | 8h | 162 |
| 261 | 23.3.36 | Minimalizacija rizika 36 | manual | 1d | 2021-06-03 | 2021-06-03 |  |  |  | start no earlier than 2021-06-03 | BMU - Tehničar3 [50%]; BMU - Tehničar1 [50%] | 8h | 162 |
| 262 | 23.4 | Minimalizacija iskorišćenja resursa |  | 34d | 2018-08-17 | 2018-10-03 | 224 | 661d | 0d |  |  |  |  |

| ID | WBS | Task | Type | Duration | Start | Finish | Total slack | Constraint | Resources | Work | Cost |
| --- | --- | --- | --- | --- | --- | --- | --- | --- | --- | --- | --- |
| 263 | 23.5 | **Upravljanje aktivnostima** |  | 757.75d | 2018-07-02 | 2021-06-01 | 0d |  |  | 288h | 7,704 |
| 264 | 23.5.1 | Upravljanje aktivnostima 1 | manual | 1d | 2018-07-02 | 2018-07-02 |  | start no earlier than 2018-07-02 | BMU - Istraživač1 [50%]; BMU - Istraživač2 [50%] | 8h | 214 |
| 265 | 23.5.2 | Upravljanje aktivnostima 2 | manual | 1d | 2018-08-01 | 2018-08-01 |  | start no earlier than 2018-08-01 | BMU - Istraživač1 [50%]; BMU - Istraživač2 [50%] | 8h | 214 |
| 266 | 23.5.3 | Upravljanje aktivnostima 3 | manual | 1d | 2018-09-03 | 2018-09-03 |  | start no earlier than 2018-09-03 | BMU - Istraživač1 [50%]; BMU - Istraživač2 [50%] | 8h | 214 |
| 267 | 23.5.4 | Upravljanje aktivnostima 4 | manual | 1d | 2018-10-01 | 2018-10-01 |  | start no earlier than 2018-10-01 | BMU - Istraživač1 [50%]; BMU - Istraživač2 [50%] | 8h | 214 |
| 268 | 23.5.5 | Upravljanje aktivnostima 5 | manual | 1d | 2018-11-01 | 2018-11-01 |  | start no earlier than 2018-11-01 | BMU - Istraživač1 [50%]; BMU - Istraživač2 [50%] | 8h | 214 |
| 269 | 23.5.6 | Upravljanje aktivnostima 6 | manual | 1d | 2018-12-03 | 2018-12-03 |  | start no earlier than 2018-12-03 | BMU - Istraživač1 [50%]; BMU - Istraživač2 [50%] | 8h | 214 |
| 270 | 23.5.7 | Upravljanje aktivnostima 7 | manual | 1d | 2019-01-01 | 2019-01-01 |  | start no earlier than 2019-01-01 | BMU - Istraživač1 [50%]; BMU - Istraživač2 [50%] | 8h | 214 |
| 271 | 23.5.8 | Upravljanje aktivnostima 8 | manual | 1d | 2019-02-01 | 2019-02-01 |  | start no earlier than 2019-02-01 | BMU - Istraživač1 [50%]; BMU - Istraživač2 [50%] | 8h | 214 |
| 272 | 23.5.9 | Upravljanje aktivnostima 9 | manual | 1d | 2019-03-01 | 2019-03-01 |  | start no earlier than 2019-03-01 | BMU - Istraživač1 [50%]; BMU - Istraživač2 [50%] | 8h | 214 |
| 273 | 23.5.10 | Upravljanje aktivnostima 10 | manual | 1d | 2019-04-01 | 2019-04-01 |  | start no earlier than 2019-04-01 | BMU - Istraživač1 [50%]; BMU - Istraživač2 [50%] | 8h | 214 |
| 274 | 23.5.11 | Upravljanje aktivnostima 11 | manual | 1d | 2019-05-01 | 2019-05-01 |  | start no earlier than 2019-05-01 | BMU - Istraživač1 [50%]; BMU - Istraživač2 [50%] | 8h | 214 |
| 275 | 23.5.12 | Upravljanje aktivnostima 12 | manual | 1d | 2019-06-03 | 2019-06-03 |  | start no earlier than 2019-06-03 | BMU - Istraživač1 [50%]; BMU - Istraživač2 [50%] | 8h | 214 |
| 276 | 23.5.13 | Upravljanje aktivnostima 13 | manual | 1d | 2019-07-01 | 2019-07-01 |  | start no earlier than 2019-07-01 | BMU - Istraživač1 [50%]; BMU - Istraživač2 [50%] | 8h | 214 |
| 277 | 23.5.14 | Upravljanje aktivnostima 14 | manual | 1d | 2019-08-01 | 2019-08-01 |  | start no earlier than 2019-08-01 | BMU - Istraživač1 [50%]; BMU - Istraživač2 [50%] | 8h | 214 |
| 278 | 23.5.15 | Upravljanje aktivnostima 15 | manual | 1d | 2019-09-02 | 2019-09-02 |  | start no earlier than 2019-09-02 | BMU - Istraživač1 [50%]; BMU - Istraživač2 [50%] | 8h | 214 |
| 279 | 23.5.16 | Upravljanje aktivnostima 16 | manual | 1d | 2019-10-01 | 2019-10-01 |  | start no earlier than 2019-10-01 | BMU - Istraživač1 [50%]; BMU - Istraživač2 [50%] | 8h | 214 |
| 280 | 23.5.17 | Upravljanje aktivnostima 17 | manual | 1d | 2019-11-01 | 2019-11-01 |  | start no earlier than 2019-11-01 | BMU - Istraživač1 [50%]; BMU - Istraživač2 [50%] | 8h | 214 |
| 281 | 23.5.18 | Upravljanje aktivnostima 18 | manual | 1d | 2019-12-02 | 2019-12-02 |  | start no earlier than 2019-12-02 | BMU - Istraživač1 [50%]; BMU - Istraživač2 [50%] | 8h | 214 |
| 282 | 23.5.19 | Upravljanje aktivnostima 19 | manual | 1d | 2020-01-01 | 2020-01-01 |  | start no earlier than 2020-01-01 | BMU - Istraživač1 [50%]; BMU - Istraživač2 [50%] | 8h | 214 |
| 283 | 23.5.20 | Upravljanje aktivnostima 20 | manual | 1d | 2020-02-03 | 2020-02-03 |  | start no earlier than 2020-02-03 | BMU - Istraživač1 [50%]; BMU - Istraživač2 [50%] | 8h | 214 |
| 284 | 23.5.21 | Upravljanje aktivnostima 21 | manual | 1d | 2020-03-02 | 2020-03-02 |  | start no earlier than 2020-03-02 | BMU - Istraživač1 [50%]; BMU - Istraživač2 [50%] | 8h | 214 |
| 285 | 23.5.22 | Upravljanje aktivnostima 22 | manual | 1d | 2020-04-01 | 2020-04-01 |  | start no earlier than 2020-04-01 | BMU - Istraživač1 [50%]; BMU - Istraživač2 [50%] | 8h | 214 |
| 286 | 23.5.23 | Upravljanje aktivnostima 23 | manual | 1d | 2020-05-01 | 2020-05-01 |  | start no earlier than 2020-05-01 | BMU - Istraživač1 [50%]; BMU - Istraživač2 [50%] | 8h | 214 |
| 287 | 23.5.24 | Upravljanje aktivnostima 24 | manual | 1d | 2020-06-01 | 2020-06-01 |  | start no earlier than 2020-06-01 | BMU - Istraživač1 [50%]; BMU - Istraživač2 [50%] | 8h | 214 |
| 288 | 23.5.25 | Upravljanje aktivnostima 25 | manual | 1d | 2020-07-01 | 2020-07-01 |  | start no earlier than 2020-07-01 | BMU - Istraživač1 [50%]; BMU - Istraživač2 [50%] | 8h | 214 |
| 289 | 23.5.26 | Upravljanje aktivnostima 26 | manual | 1d | 2020-08-03 | 2020-08-03 |  | start no earlier than 2020-08-03 | BMU - Istraživač1 [50%]; BMU - Istraživač2 [50%] | 8h | 214 |
| 290 | 23.5.27 | Upravljanje aktivnostima 27 | manual | 1d | 2020-09-01 | 2020-09-01 |  | start no earlier than 2020-09-01 | BMU - Istraživač1 [50%]; BMU - Istraživač2 [50%] | 8h | 214 |
| 291 | 23.5.28 | Upravljanje aktivnostima 28 | manual | 1d | 2020-10-01 | 2020-10-01 |  | start no earlier than 2020-10-01 | BMU - Istraživač1 [50%]; BMU - Istraživač2 [50%] | 8h | 214 |
| 292 | 23.5.29 | Upravljanje aktivnostima 29 | manual | 1d | 2020-11-02 | 2020-11-02 |  | start no earlier than 2020-11-02 | BMU - Istraživač1 [50%]; BMU - Istraživač2 [50%] | 8h | 214 |
| 293 | 23.5.30 | Upravljanje aktivnostima 30 | manual | 1d | 2020-12-01 | 2020-12-01 |  | start no earlier than 2020-12-01 | BMU - Istraživač1 [50%]; BMU - Istraživač2 [50%] | 8h | 214 |
| 294 | 23.5.31 | Upravljanje aktivnostima 31 | manual | 1d | 2021-01-01 | 2021-01-01 |  | start no earlier than 2021-01-01 | BMU - Istraživač1 [50%]; BMU - Istraživač2 [50%] | 8h | 214 |
| 295 | 23.5.32 | Upravljanje aktivnostima 32 | manual | 1d | 2021-02-01 | 2021-02-01 |  | start no earlier than 2021-02-01 | BMU - Istraživač1 [50%]; BMU - Istraživač2 [50%] | 8h | 214 |
| 296 | 23.5.33 | Upravljanje aktivnostima 33 | manual | 1d | 2021-03-01 | 2021-03-01 |  | start no earlier than 2021-03-01 | BMU - Istraživač1 [50%]; BMU - Istraživač2 [50%] | 8h | 214 |
| 297 | 23.5.34 | Upravljanje aktivnostima 34 | manual | 1d | 2021-04-01 | 2021-04-01 |  | start no earlier than 2021-04-01 | BMU - Istraživač1 [50%]; BMU - Istraživač2 [50%] | 8h | 214 |
| 298 | 23.5.35 | Upravljanje aktivnostima 35 | manual | 1d | 2021-05-03 | 2021-05-03 |  | start no earlier than 2021-05-03 | BMU - Istraživač1 [50%]; BMU - Istraživač2 [50%] | 8h | 214 |
| 299 | 23.5.36 | Upravljanje aktivnostima 36 | manual | 1d | 2021-06-01 | 2021-06-01 |  | start no earlier than 2021-06-01 | BMU - Istraživač1 [50%]; BMU - Istraživač2 [50%] | 8h | 214 |

| ID | WBS | Task | Type | Duration | Start | Finish | Predecessors | Total slack | Constraint | Resources | Work | Cost |
| --- | --- | --- | --- | --- | --- | --- | --- | --- | --- | --- | --- | --- |
| 300 | 23.6 | **Mesečni sastanak - video konferencija** |  | 757.75d | 2018-07-02 | 2021-06-01 |  | 0d |  |  | 536h | 18,760 |
| 301 | 23.6.1 | Mesečni sastanak - video konferencija 1 | manual | 1d | 2018-07-02 | 2018-07-02 |  |  | start no earlier than 2018-07-02 | BMU - Menadzer1; BMU - Menadzer2 | 16h | 560 |
| 302 | 23.6.2 | Mesečni sastanak - video konferencija 2 | manual | 1d | 2018-08-01 | 2018-08-01 |  |  | start no earlier than 2018-08-01 | BMU - Menadzer1; BMU - Menadzer2 | 16h | 560 |
| 303 | 23.6.3 | Mesečni sastanak - video konferencija 3 | manual | 1d | 2018-09-03 | 2018-09-03 |  |  | start no earlier than 2018-09-03 | BMU - Menadzer1; BMU - Menadzer2 | 16h | 560 |
| 304 | 23.6.4 | Mesečni sastanak - video konferencija 4 | manual | 1d | 2018-10-01 | 2018-10-01 |  |  | start no earlier than 2018-10-01 | BMU - Menadzer1; BMU - Menadzer2 | 16h | 560 |
| 305 | 23.6.5 | Mesečni sastanak - video konferencija 5 | manual | 1d | 2018-11-01 | 2018-11-01 |  |  | start no earlier than 2018-11-01 | BMU - Menadzer1; BMU - Menadzer2 | 16h | 560 |
| 306 | 23.6.6 | Mesečni sastanak - video konferencija 6 | manual | 1d | 2018-12-03 | 2018-12-03 |  |  | start no earlier than 2018-12-03 | BMU - Menadzer1; BMU - Menadzer2 | 16h | 560 |
| 307 | 23.6.7 | Mesečni sastanak - video konferencija 7 | manual | 1d | 2019-01-01 | 2019-01-01 |  |  | start no earlier than 2019-01-01 | BMU - Menadzer1; BMU - Menadzer2 | 16h | 560 |
| 308 | 23.6.8 | Mesečni sastanak - video konferencija 8 | manual | 1d | 2019-02-01 | 2019-02-01 |  |  | start no earlier than 2019-02-01 | BMU - Menadzer1; BMU - Menadzer2 | 16h | 560 |
| 309 | 23.6.9 | Mesečni sastanak - video konferencija 9 | manual | 1d | 2019-03-01 | 2019-03-01 |  |  | start no earlier than 2019-03-01 | BMU - Menadzer1; BMU - Menadzer2 | 16h | 560 |
| 310 | 23.6.10 | Mesečni sastanak - video konferencija 10 | manual | 1d | 2019-04-01 | 2019-04-01 |  |  | start no earlier than 2019-04-01 | BMU - Menadzer1; BMU - Menadzer2 | 16h | 560 |
| 311 | 23.6.11 | Mesečni sastanak - video konferencija 11 | manual | 1d | 2019-05-01 | 2019-05-01 |  |  | start no earlier than 2019-05-01 | BMU - Menadzer1; BMU - Menadzer2 | 16h | 560 |
| 312 | 23.6.12 | Mesečni sastanak - video konferencija 12 | manual | 1d | 2019-06-03 | 2019-06-03 |  |  | start no earlier than 2019-06-03 | BMU - Menadzer1; BMU - Menadzer2 | 16h | 560 |
| 313 | 23.6.13 | Mesečni sastanak - video konferencija 13 | manual | 1d | 2019-07-01 | 2019-07-01 |  |  | start no earlier than 2019-07-01 | BMU - Menadzer1; BMU - Menadzer2 | 16h | 560 |
| 314 | 23.6.14 | Mesečni sastanak - video konferencija 14 | manual | 1d | 2019-08-01 | 2019-08-01 |  |  | start no earlier than 2019-08-01 | BMU - Menadzer1; BMU - Menadzer2 | 16h | 560 |
| 315 | 23.6.15 | Mesečni sastanak - video konferencija 15 | manual | 1d | 2019-09-02 | 2019-09-02 |  |  | start no earlier than 2019-09-02 | BMU - Menadzer1; BMU - Menadzer2 | 16h | 560 |
| 316 | 23.6.16 | Mesečni sastanak - video konferencija 16 | manual | 1d | 2019-10-01 | 2019-10-01 |  |  | start no earlier than 2019-10-01 | BMU - Menadzer1; BMU - Menadzer2 | 16h | 560 |
| 317 | 23.6.17 | Mesečni sastanak - video konferencija 17 | manual | 1d | 2019-11-01 | 2019-11-01 |  |  | start no earlier than 2019-11-01 | BMU - Menadzer1; BMU - Menadzer2 | 16h | 560 |
| 318 | 23.6.18 | Mesečni sastanak - video konferencija 18 | manual | 1d | 2019-12-02 | 2019-12-02 |  |  | start no earlier than 2019-12-02 | BMU - Menadzer1; BMU - Menadzer2 | 16h | 560 |
| 319 | 23.6.19 | Mesečni sastanak - video konferencija 19 | manual | 1d | 2020-01-01 | 2020-01-01 |  |  | start no earlier than 2020-01-01 | BMU - Menadzer1; BMU - Menadzer2 | 16h | 560 |
| 320 | 23.6.20 | Mesečni sastanak - video konferencija 20 | manual | 1d | 2020-02-03 | 2020-02-03 |  |  | start no earlier than 2020-02-03 | BMU - Menadzer1; BMU - Menadzer2 | 16h | 560 |
| 321 | 23.6.21 | Mesečni sastanak - video konferencija 21 | manual | 1d | 2020-03-02 | 2020-03-02 |  |  | start no earlier than 2020-03-02 | BMU - Menadzer1; BMU - Menadzer2 | 16h | 560 |
| 322 | 23.6.22 | Mesečni sastanak - video konferencija 22 | manual | 1d | 2020-04-01 | 2020-04-01 |  |  | start no earlier than 2020-04-01 | BMU - Menadzer1; BMU - Menadzer2 | 16h | 560 |
| 323 | 23.6.23 | Mesečni sastanak - video konferencija 23 | manual | 1d | 2020-05-01 | 2020-05-01 |  |  | start no earlier than 2020-05-01 | BMU - Menadzer1; BMU - Menadzer2 | 16h | 560 |
| 324 | 23.6.24 | Mesečni sastanak - video konferencija 24 | manual | 1d | 2020-06-01 | 2020-06-01 |  |  | start no earlier than 2020-06-01 | BMU - Menadzer1; BMU - Menadzer2 | 16h | 560 |
| 325 | 23.6.25 | Mesečni sastanak - video konferencija 25 | manual | 1d | 2020-07-01 | 2020-07-01 |  |  | start no earlier than 2020-07-01 | BMU - Menadzer1; BMU - Menadzer2 | 16h | 560 |
| 326 | 23.6.26 | Mesečni sastanak - video konferencija 26 | manual | 1d | 2020-08-03 | 2020-08-03 |  |  | start no earlier than 2020-08-03 | BMU - Menadzer1; BMU - Menadzer2 | 16h | 560 |
| 327 | 23.6.27 | Mesečni sastanak - video konferencija 27 | manual | 1d | 2020-09-01 | 2020-09-01 |  |  | start no earlier than 2020-09-01 | BMU - Menadzer1; BMU - Menadzer2 | 16h | 560 |
| 328 | 23.6.28 | Mesečni sastanak - video konferencija 28 | manual | 1d | 2020-10-01 | 2020-10-01 |  |  | start no earlier than 2020-10-01 | BMU - Menadzer3 | 8h | 280 |
| 329 | 23.6.29 | Mesečni sastanak - video konferencija 29 | manual | 1d | 2020-11-02 | 2020-11-02 |  |  | start no earlier than 2020-11-02 | BMU - Menadzer3 | 8h | 280 |
| 330 | 23.6.30 | Mesečni sastanak - video konferencija 30 | manual | 1d | 2020-12-01 | 2020-12-01 |  |  | start no earlier than 2020-12-01 | BMU - Menadzer3 | 8h | 280 |
| 331 | 23.6.31 | Mesečni sastanak - video konferencija 31 | manual | 1d | 2021-01-01 | 2021-01-01 |  |  | start no earlier than 2021-01-01 | BMU - Menadzer3 | 8h | 280 |
| 332 | 23.6.32 | Mesečni sastanak - video konferencija 32 | manual | 1d | 2021-02-01 | 2021-02-01 |  |  | start no earlier than 2021-02-01 | BMU - Menadzer3 | 8h | 280 |
| 333 | 23.6.33 | Mesečni sastanak - video konferencija 33 | manual | 1d | 2021-03-01 | 2021-03-01 |  |  | start no earlier than 2021-03-01 | BMU - Menadzer1; BMU - Menadzer2 | 16h | 560 |
| 334 | 23.6.34 | Mesečni sastanak - video konferencija 34 | manual | 1d | 2021-04-01 | 2021-04-01 |  |  | start no earlier than 2021-04-01 | BMU - Menadzer1; BMU - Menadzer2 | 16h | 560 |
| 335 | 23.6.35 | Mesečni sastanak - video konferencija 35 | manual | 1d | 2021-05-03 | 2021-05-03 |  |  | start no earlier than 2021-05-03 | BMU - Menadzer1; BMU - Menadzer2 | 16h | 560 |
| 336 | 23.6.36 | Mesečni sastanak - video konferencija 36 | manual | 1d | 2021-06-01 | 2021-06-01 |  |  | start no earlier than 2021-06-01 | BMU - Menadzer1; BMU - Menadzer2 | 16h | 560 |
| 337 | 23.7 | Dorada MS Project fajla |  | 10d | 2018-07-02 | 2018-07-13 |  | 769d |  |  |  |  |
| 338 | 23.8 | Upravljanje merama kvailteta i postupcima |  | 50d | 2018-10-04 | 2018-12-12 | 262 | 661d |  |  |  |  |
| 339 | 23.9 | Upravljanje načinom komunikacije |  | 5d | 2018-07-02 | 2018-07-06 |  | 774d |  |  |  |  |
